# 51ebs

Schedule from MS Project, 2011-02-21 to 2011-03-23, status date 2011-02-21, 3 hours a day, A marks actual dates.

## Calendars

- Standard: Mon-Fri 20:00-23:00; Sat-Sun off.

## Resources

| Resource |
| --- |
| TJU |
| YI |

## Schedule

| ID | WBS | Task | Type | Duration | Start | Finish | Predecessors | Complete | Remaining | Total slack | Free slack | Constraint | Resources | Work |
| --- | --- | --- | --- | --- | --- | --- | --- | --- | --- | --- | --- | --- | --- | --- |
| 1 | 1 | **eBusinessSuite** |  | 22.67d | 2011-02-21 20:00 A | 2011-03-23 22:00 |  | 7% | 21.16d |  |  |  |  | 99h |
| 2 | 1.1 | **系统设置** |  | 4d | 2011-02-21 20:00 A | 2011-02-24 23:00 |  | 50% | 2d |  |  |  | TJU | 12h |
| 3 | 1.1.1 | 用户注册 |  | 3h | 2011-02-21 20:00 A | 2011-02-21 23:00 A |  | 100% |  |  |  | start no earlier than 2011-02-21 20:00 |  |  |
| 4 | 1.1.2 | 用户组维护 |  | 3h | 2011-02-22 20:00 | 2011-02-22 23:00 | 3 |  |  | 18.67d | 0d | start no earlier than 2011-02-16 09:00 |  |  |
| 5 | 1.1.3 | 系统用户维护 |  | 3h | 2011-02-23 20:00 | 2011-02-23 23:00 | 4 |  |  | 18.67d | 0d | start no earlier than 2011-02-16 09:00 |  |  |
| 6 | 1.1.4 | 用户登陆 |  | 2h | 2011-02-24 20:00 A | 2011-02-24 22:00 A | 5 | 100% |  |  |  | start no earlier than 2011-02-16 09:00 |  |  |
| 7 | 1.1.5 | 首次登陆修改密码 |  | 1h | 2011-02-24 22:00 A | 2011-02-24 23:00 A | 6 | 100% |  |  |  | start no earlier than 2011-02-21 08:00 |  |  |
| 8 | 1.2 | **基础资料** |  | 8d | 2011-02-21 20:00 | 2011-03-02 23:00 |  |  |  | 0d |  |  |  | 30h |
| 9 | 1.2.1 | **内部组织** |  | 4d | 2011-02-25 20:00 | 2011-03-02 23:00 | 2 |  |  | 6.67d |  |  | TJU | 12h |
| 10 | 1.2.1.1 | 网点设定 |  | 3h | 2011-02-25 20:00 | 2011-02-25 23:00 |  |  |  | 6.67d | 0d | start no earlier than 2011-02-16 09:00 |  |  |
| 11 | 1.2.1.2 | 部门设定 |  | 3h | 2011-02-28 20:00 | 2011-02-28 23:00 | 10 |  |  | 6.67d | 0d | start no earlier than 2011-02-16 09:00 |  |  |
| 12 | 1.2.1.3 | 职位与职称设定 |  | 3h | 2011-03-01 20:00 | 2011-03-01 23:00 | 11 |  |  | 6.67d | 0d | start no earlier than 2011-02-16 09:00 |  |  |
| 13 | 1.2.1.4 | 员工资料 |  | 3h | 2011-03-02 20:00 | 2011-03-02 23:00 | 12 |  |  | 6.67d |  | start no earlier than 2011-02-16 09:00 |  |  |
| 14 | 1.2.2 | **货品资料** |  | 4d | 2011-02-21 20:00 | 2011-02-24 23:00 |  |  |  |  |  |  | YI | 12h |
| 15 | 1.2.2.1 | 货品类别 |  | 3h | 2011-02-21 20:00 | 2011-02-21 23:00 |  |  |  | 18.67d | 0d | start no earlier than 2011-02-21 20:00 |  |  |
| 16 | 1.2.2.2 | 货品属性自定义 |  | 3h | 2011-02-22 20:00 | 2011-02-22 23:00 | 15 |  |  | 18.67d | 0d | start no earlier than 2011-02-16 09:00 |  |  |
| 17 | 1.2.2.3 | 货品资料维护 |  | 3h | 2011-02-23 20:00 | 2011-02-23 23:00 | 16 |  |  | 18.67d | 0d | start no earlier than 2011-02-16 09:00 |  |  |
| 18 | 1.2.2.4 | 价格维护 |  | 3h | 2011-02-24 20:00 | 2011-02-24 23:00 | 17 |  |  | 18.67d |  | start no earlier than 2011-02-16 09:00 |  |  |
| 19 | 1.2.3 | **外部机构** |  | 2d | 2011-02-25 20:00 | 2011-02-28 23:00 | 14 |  |  | 8.67d | 0d |  | YI | 6h |
| 20 | 1.2.3.1 | 供应商(供应商等级) |  | 3h | 2011-02-25 20:00 | 2011-02-25 23:00 |  |  |  | 8.67d | 0d | start no earlier than 2011-02-16 09:00 |  |  |
| 21 | 1.2.3.2 | 客户(客户等级) |  | 3h | 2011-02-28 20:00 | 2011-02-28 23:00 | 20 |  |  | 8.67d | 0d | start no earlier than 2011-02-16 09:00 |  |  |
| 22 | 1.3 | Milestone 1 | milestone | 0h | 2011-02-28 23:00 | 2011-02-28 23:00 | 21 |  |  | 16.67d |  | finish no earlier than 2011-02-21 23:00 |  |  |
| 23 | 1.4 | **采购系统** |  | 4d | 2011-03-03 20:00 | 2011-03-08 23:00 | 8 |  |  | 6.67d | 0d |  | TJU | 12h |
| 24 | 1.4.1 | 采购计划 |  | 3h | 2011-03-03 20:00 | 2011-03-03 23:00 |  |  |  | 6.67d | 0d | start no earlier than 2011-02-16 09:00 |  |  |
| 25 | 1.4.2 | 采购订单 |  | 3h | 2011-03-04 20:00 | 2011-03-04 23:00 | 24 |  |  | 6.67d | 0d | start no earlier than 2011-02-16 09:00 |  |  |
| 26 | 1.4.3 | 采购入库 |  | 3h | 2011-03-07 20:00 | 2011-03-07 23:00 | 25 |  |  | 6.67d | 0d | start no earlier than 2011-02-16 09:00 |  |  |
| 27 | 1.4.4 | 采购退出 |  | 3h | 2011-03-08 20:00 | 2011-03-08 23:00 | 26 |  |  | 6.67d |  | start no earlier than 2011-02-16 09:00 |  |  |

| ID | WBS | Task | Duration | Start | Finish | Predecessors | Total slack | Free slack | Constraint | Resources | Work |
| --- | --- | --- | --- | --- | --- | --- | --- | --- | --- | --- | --- |
| 28 | 1.5 | **销售系统** | 10d | 2011-03-01 20:00 | 2011-03-14 23:00 |  | 6.67d |  |  |  | 30h |
| 29 | 1.5.1 | **大客户业务** | 4d | 2011-03-01 20:00 | 2011-03-04 23:00 | 19 | 8.67d | 0d |  | YI | 12h |
| 30 | 1.5.1.1 | 销售计划 | 3h | 2011-03-01 20:00 | 2011-03-01 23:00 |  | 8.67d | 0d | start no earlier than 2011-02-16 09:00 |  |  |
| 31 | 1.5.1.2 | 销售订单 | 3h | 2011-03-02 20:00 | 2011-03-02 23:00 | 30 | 8.67d | 0d | start no earlier than 2011-02-16 09:00 |  |  |
| 32 | 1.5.1.3 | 销售出库 | 3h | 2011-03-03 20:00 | 2011-03-03 23:00 | 31 | 8.67d | 0d | start no earlier than 2011-02-16 09:00 |  |  |
| 33 | 1.5.1.4 | 销售退回 | 3h | 2011-03-04 20:00 | 2011-03-04 23:00 | 32 | 8.67d |  | start no earlier than 2011-02-16 09:00 |  |  |
| 34 | 1.5.2 | **零售业务** | 4d | 2011-03-09 20:00 | 2011-03-14 23:00 | 23 | 6.67d |  |  | TJU | 18h |
| 35 | 1.5.2.1 | 会员资料 | 6h | 2011-03-09 20:00 | 2011-03-10 23:00 |  | 6.67d | 0d | start no earlier than 2011-02-16 09:00 |  | 6h |
| 36 | 1.5.2.2 | 销售日报 | 3h | 2011-03-11 20:00 | 2011-03-11 23:00 | 35 | 6.67d | 0d | start no earlier than 2011-02-16 09:00 |  |  |
| 37 | 1.5.2.3 | 销售退回 | 3h | 2011-03-14 20:00 | 2011-03-14 23:00 | 36 | 6.67d |  | start no earlier than 2011-02-16 09:00 |  |  |
| 38 | 1.6 | **库存系统** | 4d | 2011-03-07 20:00 | 2011-03-10 23:00 | 29 | 8.67d |  |  | YI | 15h |
| 39 | 1.6.1 | 仓库设置 | 3h | 2011-03-07 20:00 | 2011-03-07 23:00 |  | 8.67d | 0d | start no earlier than 2011-02-21 20:00 |  |  |
| 40 | 1.6.2 | 入库单 | 3h | 2011-03-08 20:00 | 2011-03-08 23:00 | 39 | 8.67d | 0d | start no earlier than 2011-02-16 09:00 |  | 3h |
| 41 | 1.6.3 | 出库单 | 3h | 2011-03-09 20:00 | 2011-03-09 23:00 | 40 | 8.67d | 0d | start no earlier than 2011-02-16 09:00 |  |  |
| 42 | 1.6.4 | 盘点损益 | 3h | 2011-03-10 20:00 | 2011-03-10 23:00 | 41 | 8.67d |  | start no earlier than 2011-02-16 09:00 |  |  |
